# SmartClinic

Schedule from MS Project, 2026-09-01 to 2026-10-29, status date 2026-10-15, costs in $, A marks actual dates.

## Calendars

- Standard: Mon-Fri 08:00-12:00, 13:00-17:00; Sat-Sun off.

## Resources

| Resource | Rate |
| --- | --- |
| Project Manager | 7.5 |
| Business Analyst | 6.25 |
| UI/UX Designer | 5.63 |
| Backend Developer | 8.75 |
| Frontend Developer | 8.13 |
| QA Engineer | 6.88 |
| Database Administrator | 8.13 |
| DevOps Engineer | 9.38 |
| Security Analyst | 10 |
| Intern Developer | 2.5 |
| System Architect | 11.25 |
| Technical Writer | 5 |
| Server Infrastructure |  |

## Schedule

| ID | WBS | Task | Type | Duration | Start | Finish | Predecessors | Complete | Remaining | Baseline start | Baseline finish | Baseline duration | Total slack | Resources | Work | Actual work | Cost | Baseline cost | Actual cost |
| --- | --- | --- | --- | --- | --- | --- | --- | --- | --- | --- | --- | --- | --- | --- | --- | --- | --- | --- | --- |
| 1 | 1 | **Project Initiation** |  | 4d | 2026-09-01 A | 2026-09-04 |  | 99% | 0d | 2026-09-01 | 2026-09-04 | 4d | 39d |  | 40h | 40h | 280 | 280 | 280 |
| 2 | 1.1 | Draft Project Charter |  | 3d | 2026-09-01 A | 2026-09-03 A |  | 100% |  | 2026-09-01 | 2026-09-03 | 3d |  | Project Manager | 24h | 24h | 180 | 180 | 180 |
| 3 | 1.2 | Conduct Kick-off Meeting |  | 1d | 2026-09-04 A | 2026-09-04 A | 2 | 100% |  | 2026-09-04 | 2026-09-04 | 1d |  | Project Manager; Technical Writer | 16h | 16h | 100 | 100 | 100 |
| 4 | 1.3 | Project Approved | milestone | 0d | 2026-09-04 | 2026-09-04 | 3 |  |  | 2026-09-04 | 2026-09-04 | 0d | 39d |  |  |  |  |  |  |
| 5 | 2 | **Requirement Gathering** |  | 6d | 2026-09-07 A | 2026-09-14 A |  | 100% |  | 2026-09-07 | 2026-09-10 | 4d |  |  | 48h | 48h | 300 | 200 | 300 |
| 6 | 2.1 | Gather Patient & Doctor Requirements |  | 6d | 2026-09-07 A | 2026-09-14 A | 4 | 100% |  | 2026-09-07 | 2026-09-10 | 4d |  | Business Analyst | 48h | 48h | 300 | 200 | 300 |
| 7 | 3 | **System Analysis** |  | 5d | 2026-09-15 | 2026-09-21 |  |  |  | 2026-09-11 | 2026-09-17 | 5d | 0d |  | 40h |  | 250 | 250 |  |
| 8 | 3.1 | Model System & Finalize SRS |  | 5d | 2026-09-15 | 2026-09-21 | 6 |  |  | 2026-09-11 | 2026-09-17 | 5d | 0d | Business Analyst | 40h |  | 250 | 250 |  |
| 9 | 4 | **UI/UX Design** |  | 5d | 2026-09-22 | 2026-09-28 |  |  |  | 2026-09-18 | 2026-09-24 | 5d | 0d |  | 80h |  | 475.2 | 475.2 |  |
| 10 | 4.1 | Design Wireframes & High-Fid Prototypes |  | 5d | 2026-09-22 | 2026-09-28 | 8 |  |  | 2026-09-18 | 2026-09-24 | 5d | 0d | UI/UX Designer; Business Analyst | 80h |  | 475.2 | 475.2 |  |
| 11 | 5 | **Database Design** |  | 3d | 2026-09-29 | 2026-10-01 |  |  |  | 2026-09-25 | 2026-09-29 | 3d | 0d |  | 24h |  | 195.12 | 195.12 |  |
| 12 | 5.1 | Design Schema & ER Diagram |  | 3d | 2026-09-29 | 2026-10-01 | 8, 10 |  |  | 2026-09-25 | 2026-09-29 | 3d | 0d | Database Administrator | 24h |  | 195.12 | 195.12 |  |
| 13 | 6 | **Application Development** |  | 12d | 2026-10-02 | 2026-10-19 |  |  |  | 2026-09-30 | 2026-10-15 | 12d | 0d |  | 192h |  | 1,320.48 | 1,320.48 |  |
| 14 | 6.1 | Develop Backend APIs |  | 6d | 2026-10-02 | 2026-10-09 | 12 |  |  | 2026-09-30 | 2026-10-07 | 6d | 6d | Backend Developer; Frontend Developer | 96h |  | 810.24 | 810.24 |  |
| 15 | 6.2 | Code Frontend Integration |  | 12d | 2026-10-02 | 2026-10-19 | 12 |  |  | 2026-09-30 | 2026-10-15 | 12d | 0d | Frontend Developer; Intern Developer | 96h |  | 510.24 | 510.24 |  |
| 16 | 7 | **Testing** |  | 4d | 2026-10-20 | 2026-10-23 |  |  |  | 2026-10-16 | 2026-10-21 | 4d | 0d |  | 40h |  | 325.12 | 325.12 |  |
| 17 | 7.1 | Execute Functional & Security Testing |  | 4d | 2026-10-20 | 2026-10-23 | 14, 15 |  |  | 2026-10-16 | 2026-10-21 | 4d | 0d | QA Engineer [75%]; Security Analyst [50%] | 40h |  | 325.12 | 325.12 |  |
| 18 | 7.2 | System Testing Completed | milestone | 0d | 2026-10-23 | 2026-10-23 | 17 |  |  | 2026-10-21 | 2026-10-21 | 0d | 0d |  |  |  |  |  |  |
| 19 | 8 | **Deployment Prep** |  | 1d | 2026-10-26 | 2026-10-26 |  |  |  | 2026-10-22 | 2026-10-22 | 1d | 0d |  | 8h |  | 575.04 | 575.04 |  |
| 20 | 8.1 | Prepare Production Environment |  | 1d | 2026-10-26 | 2026-10-26 | 18 |  |  | 2026-10-22 | 2026-10-22 | 1d | 0d | DevOps Engineer; Server Infrastructure [0.1%] | 8h |  | 575.04 | 575.04 |  |
| 21 | 9 | **Deployment** |  | 1d | 2026-10-27 | 2026-10-27 |  |  |  | 2026-10-23 | 2026-10-23 | 1d | 0d |  | 8h |  | 75.04 | 75.04 |  |
| 22 | 9.1 | Migrate Database & Deploy to Cloud |  | 1d | 2026-10-27 | 2026-10-27 | 20 |  |  | 2026-10-23 | 2026-10-23 | 1d | 0d | DevOps Engineer | 8h |  | 75.04 | 75.04 |  |
| 23 | 10 | **Project Closure** |  | 2d | 2026-10-28 | 2026-10-29 |  |  |  | 2026-10-26 | 2026-10-27 | 2d | 0d |  | 32h |  | 200 | 200 |  |
| 24 | 10.1 | Handover, Training & Final Sign-off |  | 2d | 2026-10-28 | 2026-10-29 | 22 |  |  | 2026-10-26 | 2026-10-27 | 2d | 0d | Project Manager; Technical Writer | 32h |  | 200 | 200 |  |
| 25 | 10.2 | Project Closed | milestone | 0d | 2026-10-29 | 2026-10-29 | 24 |  |  | 2026-10-27 | 2026-10-27 | 0d | 0d |  |  |  |  |  |  |
